# eŠkola

Schedule from MS Project, 2021-05-05 to 2023-05-05, costs in €.
Projektni plan
Elektotehnički fakultet, Univerzitet u Beogradu
Softver koji će unaprediti obrazovni sistem srednjih škola na teritoriji Srbije

## Calendars

- Standard: Mon-Fri 08:00-12:00, 13:00-17:00; Sat-Sun off.

## Resources

| Resource | Group | Rate |
| --- | --- | --- |
| Project Menager ETF | Project Menager Team | 15 |
| Project Menager TUM | Project Menager Team | 20 |
| Project Menager RAF | Project Menager Team | 12 |
| Project Menager BJ | Project Menager Team | 18.75 |
| Project Menager EA | Project Menager Team | 15.63 |
| Project Menager P&M | Project Menager Team | 11 |
| desktop PC Processor 4 Core 2.90GHz to 5GHz 16GB RAM 480GB SDD Graphic card 8GB VRAM |  | 966.65 |
| Monitor 27" UHD |  | 434.35 |
| Web cam; 2.0 Mpix |  | 125 |
| Wirless keyboard and mouse; 1000DPI |  | 41.8 |
| Laptop 15.6";Processor 8 Core 4.6GHz;16GB RAM;1TB SSD; Graphic Card 16GB VRAM |  | 2916.67 |
| Team Leader WP4 BJ | WP4 Team | 18.75 |
| Team Leader WP3 RAF | WP3 Team | 9.37 |
| Team Leader WP5 TUM | WP5 Team | 20 |
| Team Leader WP6 EA | WP6 Team | 15.63 |
| Team Leader WP7 RAF | WP7 Team | 9.37 |
| Team Leader WP8 P&M | WP8 Team | 8.13 |
| WP3 Worker1 ETF | WP3 Team | 12.63 |
| WP3 Worker2 ETF | WP3 Team | 12.63 |
| WP3 Worker3 ETF | WP3 Team | 12.63 |
| WP3 Worker1 TUM | WP3 Team | 22.5 |
| WP3 Worker2 TUM | WP3 Team | 22.5 |
| WP3 Worker1 EA | WP3 Team | 15.63 |
| WP3 Worker2 EA | WP3 Team | 15.63 |
| WP3 Worker1 RAF | WP3 Team | 11.65 |
| WP3 Worker2 RAF | WP3 Team | 11.65 |
| WP3 Worker3 RAF | WP3 Team | 11.65 |
| WP3 Worker4 RAF | WP3 Team | 11.65 |
| WP3 Worker1 BJ | WP3 Team | 18.75 |
| WP4 Worker1 ETF | WP4 Team | 10.62 |
| WP4 Worker2 ETF | WP4 Team | 10.62 |
| WP4 Worker 1 TUM | WP4 Team | 20 |
| WP4 Worker 1 RAF | WP4 Team | 9.37 |
| WP4 Worker1 BJ | WP4 Team | 18.75 |
| WP4 Worker2 BJ | WP4 Team | 18.75 |
| WP5 Worker1 ETF | WP5 Team | 10.63 |
| WP5 Worker2 ETF | WP5 Team | 10.63 |
| WP5 Worker1 TUM | WP5 Team | 20 |
| WP5 Worker2 TUM | WP5 Team | 20 |
| WP5 Worker3 TUM | WP5 Team | 20 |
| WP5 Worker1 EA | WP5 Team | 15.63 |
| WP5 Worker1 RAF | WP5 Team | 9.37 |
| WP6 Worker1 ETF | WP6 Team | 10.62 |
| WP6 Worker1 TUM | WP6 Team | 20 |
| WP6 Worker2 TUM | WP6 Team | 20 |
| WP6 Worker1 EA | WP6 Team | 15.63 |
| WP6 Worker2 EA | WP6 Team | 15.63 |
| WP6 Worker1 RAF | WP6 Team | 9.37 |
| WP7 Worker1 ETF | WP7 Team | 10.62 |
| WP7 Worker2 ETF | WP7 Team | 10.62 |
| WP7 Worker1 TUM | WP7 Team | 20 |
| WP7 Worker1 EA | WP7 Team | 15.63 |
| WP7 Worker1 RAF | WP7 Team | 9.37 |
| WP7 Worker2 RAF | WP7 Team | 9.37 |
| WP7 Worker1 BJ | WP7 Team | 18.75 |
| WP8 Worker1 ETF | WP8 Team | 10.62 |
| WP8 Worker1 RAF | WP8 Team | 9.37 |
| WP8 Worker1 P&M | WP8 Team | 8.13 |
| WP8 Worker2 P&M | WP8 Team | 8.13 |
| WP8 Worker3 P&M | WP8 Team | 8.13 |
| WP8 Worker4 P&M | WP8 Team | 8.13 |
| WP8 Worker5 P&M | WP8 Team | 8.13 |
| Printer |  | 116.7 |
| Television 65"; 4k HDR Smart NanoCell |  | 1291 |
| Television 77"; 4K UHD Smart |  | 6500 |
| Tablet; 6GB; 128GB; 2388x1668 resolution |  | 999.15 |
| Laptop 17.3";Processor 8 Core 5GHz;16GB RAM;1TB SSD; Graphic Card 16GB VRAM. |  | 2700 |
| Laptop 14";Proccessor to 4.3 GHz; 8GB RAM; 512GB SSD; Intel UHD |  | 835 |
| Television 65"; 4K video; Smart |  | 905 |
| Avionska karta CRO - SRB + smestaj |  |  |
| Avionska karta GER - SRB + smestaj |  |  |
| Avionska karta NED - SRB + smestaj |  |  |
| Lawyer Services |  |  |
| Translation service |  |  |

## Schedule

| ID | WBS | Task | Duration | Start | Finish | Predecessors | Total slack | Free slack | Constraint | Resources | Work | Cost |
| --- | --- | --- | --- | --- | --- | --- | --- | --- | --- | --- | --- | --- |
| 1 | 1 | **WP1: Upravljanje projektom** | 523d | 2021-05-05 | 2023-05-05 |  | 0d |  |  |  | 6373.8h | 206,738.51 |
| 2 | 1.1 | **Planiranje projekta** | 6.25d | 2021-05-05 | 2021-05-13 |  | 516.75d |  |  |  | 61h | 6,969.46 |
| 3 | 1.1.1 | Definisanje obima projekta | 1d | 2021-05-05 | 2021-05-05 |  | 521d | 0d |  | Project Menager ETF [50%]; desktop PC Processor 4 Core 2.90GHz to 5GHz 16GB RAM 480GB SDD Graphic card 8GB VRAM; Monitor 27" UHD; Web cam; 2.0 Mpix; Wirless keyboard and mouse; 1000DPI | 4h | 1,627.8 |
| 4 | 1.1.2 | Izbor modela životnog ciklusa projekta (PMLC) | 4h | 2021-05-06 | 2021-05-06 | 3 | 521d | 0d |  | Project Menager P&M | 4h | 44 |
| 5 | 1.1.3 | Određivanje karakteristika proizvodne strategije | 4h | 2021-05-06 | 2021-05-06 | 4 | 521d |  |  | Project Menager RAF; Laptop 15.6";Processor 8 Core 4.6GHz;16GB RAM;1TB SSD; Graphic Card 16GB VRAM | 4h | 2,964.67 |
| 6 | 1.1.4 | Određivanje resursa | 2d | 2021-05-07 | 2021-05-10 |  | 517.75d | 1d | start no earlier than 2021-05-07 | Project Menager BJ [50%]; Project Menager EA [50%] | 16h | 275.04 |
| 7 | 1.1.5 | Planiranje vremena | 2d | 2021-05-10 | 2021-05-11 |  | 516.75d | 0d | start no earlier than 2021-05-10 | Project Menager RAF | 16h | 192 |
| 8 | 1.1.6 | Formiranje budžeta | 1.25d | 2021-05-12 | 2021-05-13 | 6, 7 | 516.75d |  |  | Project Menager EA [50%] | 5h | 78.15 |
| 9 | 1.1.7 | Planiranje rizika | 1d | 2021-05-12 | 2021-05-12 |  | 517d |  | start no earlier than 2021-05-12 | Project Menager ETF [50%]; Project Menager TUM; desktop PC Processor 4 Core 2.90GHz to 5GHz 16GB RAM 480GB SDD Graphic card 8GB VRAM; Monitor 27" UHD; Web cam; 2.0 Mpix; Wirless keyboard and mouse; 1000DPI | 12h | 1,787.8 |
| 10 | 1.2 | **Formiranje timova** | 399d | 2021-06-10 | 2022-12-20 |  | 11d |  |  |  | 80h | 1,279.04 |
| 11 | 1.2.1 | **Formiranje tima za dizajniranje arhitekture sistema** | 2d | 2021-06-10 | 2021-06-11 |  | 11d | 1d |  |  | 16h | 192 |
| 12 | 1.2.1.1 | Intervjuisanje kandidata | 1d | 2021-06-10 | 2021-06-10 |  | 11d | 0d | start no earlier than 2021-06-10 | Project Menager RAF | 8h | 96 |
| 13 | 1.2.1.2 | Odabir kandidata | 1d | 2021-06-11 | 2021-06-11 | 12 | 11d |  |  | Project Menager RAF | 8h | 96 |
| 14 | 1.2.2 | **Formiranje tima za kreiranje korisničkog interfejsa** | 3d | 2021-09-06 | 2021-09-08 |  | 10d | 0d |  |  | 24h | 450 |
| 15 | 1.2.2.1 | Intervjuisanje kandidata | 1d | 2021-09-06 | 2021-09-06 |  | 10d | 0d | start no earlier than 2021-09-06 | Project Menager BJ | 8h | 150 |
| 16 | 1.2.2.2 | Testiranje kandidata | 1d | 2021-09-07 | 2021-09-07 | 15 | 10d | 0d |  | Project Menager BJ | 8h | 150 |
| 17 | 1.2.2.3 | Odabir kandidata | 1d | 2021-09-08 | 2021-09-08 | 16 | 10d |  |  | Project Menager BJ | 8h | 150 |
| 18 | 1.2.3 | **Formiranje tima za dizajniranje I izradu baze podataka** | 2d | 2021-09-07 | 2021-09-08 |  | 305d | 0d |  |  | 16h | 320 |
| 19 | 1.2.3.1 | Intervjuisanje kandidata | 1d | 2021-09-07 | 2021-09-07 |  | 305d | 0d | start no earlier than 2021-09-07 | Project Menager TUM | 8h | 160 |
| 20 | 1.2.3.2 | Odabir kandidata | 1d | 2021-09-08 | 2021-09-08 | 19 | 305d |  |  | Project Menager TUM | 8h | 160 |
| 21 | 1.2.4 | **Formiranje tima za izradu sistema za zaštitu podataka** | 1d | 2021-09-08 | 2021-09-08 |  | 268d | 0d |  |  | 8h | 125.04 |
| 22 | 1.2.4.1 | Odabir članova tima | 1d | 2021-09-08 | 2021-09-08 |  | 268d |  | start no earlier than 2021-09-08 | Project Menager EA | 8h | 125.04 |
| 23 | 1.2.5 | **Formiranje tima za integraciju I testiranje** | 2d | 2022-12-19 | 2022-12-20 |  | 14d | 4d |  |  | 16h | 192 |
| 24 | 1.2.5.1 | Intervjuisanje kandidata | 4h | 2022-12-19 | 2022-12-19 |  | 14d | 0d | start no earlier than 2022-12-19 | Project Menager RAF | 4h | 48 |
| 25 | 1.2.5.2 | Testiranje kandidata | 4h | 2022-12-19 | 2022-12-19 | 24 | 14d | 0d |  | Project Menager RAF | 4h | 48 |
| 26 | 1.2.5.3 | Odabir kandidata | 1d | 2022-12-20 | 2022-12-20 | 25 | 14d |  |  | Project Menager RAF | 8h | 96 |

| ID | WBS | Task | Type | Duration | Start | Finish | Predecessors | Total slack | Free slack | Constraint | Resources | Work | Cost |
| --- | --- | --- | --- | --- | --- | --- | --- | --- | --- | --- | --- | --- | --- |
| 27 | 1.3 | **Kontrola I monitoring** |  | 523d | 2021-05-05 | 2023-05-05 |  | 0d |  |  |  | 6232.8h | 198,490.01 |
| 28 | 1.3.1 | **Praćenje rizika** |  | 523d | 2021-05-05 | 2023-05-05 |  | 0d |  |  |  | 6184.8h | 197,640.27 |
| 29 | 1.3.1.1 | Praćenje rizika u okviru WP1 |  | 523d | 2021-05-05 | 2023-05-05 |  | 0d |  | start no earlier than 2021-05-05 | Project Menager ETF [40%]; Lawyer Services [0.1%]; desktop PC Processor 4 Core 2.90GHz to 5GHz 16GB RAM 480GB SDD Graphic card 8GB VRAM [300%]; Monitor 27" UHD [300%]; Web cam; 2.0 Mpix [300%]; Wirless keyboard and mouse; 1000DPI [300%] | 1673.6h | 39,807.4 |
| 30 | 1.3.1.2 | Praćenje rizika u okviru WP2 |  | 29d | 2021-05-05 | 2021-06-14 | 44SS | 494d |  |  | Project Menager EA [50%]; Lawyer Services [0.1%] | 116h | 11,813.08 |
| 31 | 1.3.1.3 | Praćenje rizika u okviru WP3 |  | 62d | 2021-06-15 | 2021-09-08 | 55SS | 432d |  |  | Project Menager RAF; Lawyer Services [0.1%] | 496h | 15,952 |
| 32 | 1.3.1.4 | Praćenje rizika u okviru WP4 |  | 338d | 2021-09-09 | 2022-12-26 | 86SS | 94d |  |  | Project Menager BJ [80%]; Avionska karta NED - SRB + smestaj [0.1%]; Lawyer Services [0.1%]; Translation service [0.1%] | 2163.2h | 68,020 |
| 33 | 1.3.1.5 | Praćenje rizika u okviru WP5 |  | 43d | 2021-09-09 | 2021-11-08 | 106SS | 389d |  |  | Project Menager TUM; Lawyer Services [0.1%]; Translation service [0.1%]; Avionska karta GER - SRB + smestaj [0.1%] | 344h | 30,160 |
| 34 | 1.3.1.6 | Praćenje rizika u okviru WP6 |  | 80d | 2021-09-09 | 2021-12-29 | 113SS | 352d |  |  | Project Menager EA; Avionska karta CRO - SRB + smestaj [0.1%] | 640h | 19,663.2 |
| 35 | 1.3.1.7 | Praćenje rizika u okviru WP7 |  | 46d | 2022-12-27 | 2023-02-28 | 121SS | 48d |  |  | Project Menager RAF [50%]; Project Menager EA [50%] | 368h | 5,083.92 |
| 36 | 1.3.1.8 | Praćenje rizika u okviru WP8 |  | 48d | 2023-03-01 | 2023-05-05 | 128SS | 0d |  |  | Project Menager P&M; Laptop 15.6";Processor 8 Core 4.6GHz;16GB RAM;1TB SSD; Graphic Card 16GB VRAM; Lawyer Services [0.1%] | 384h | 7,140.67 |
| 37 | 1.3.2 | **Četvoromesečno izveštavanje o projektu** |  | 435d | 2021-09-06 | 2023-05-05 |  | 0d |  |  |  | 48h | 849.74 |
| 38 | 1.3.2.1 | Prvi izveštaj o radu |  | 1d | 2021-09-06 | 2021-09-06 |  | 434d |  | start no earlier than 2021-09-06 | Project Menager EA | 8h | 125.04 |
| 39 | 1.3.2.2 | Drugi izveštaj o radu |  | 1d | 2022-01-06 | 2022-01-06 |  | 346d |  | start no earlier than 2022-01-06 | Project Menager TUM | 8h | 160 |
| 40 | 1.3.2.3 | Treći izveštaj o radu |  | 1d | 2022-05-06 | 2022-05-06 |  | 260d |  | start no earlier than 2022-05-06 | Project Menager RAF | 8h | 96 |
| 42 | 1.3.2.4 | Peti izveštaj o radu |  | 1d | 2023-01-06 | 2023-01-06 |  | 85d |  | start no earlier than 2023-01-06 | Project Menager TUM | 8h | 160 |
| 43 | 1.3.2.5 | Finalni izveštaj |  | 1d | 2023-05-05 | 2023-05-05 |  | 0d |  | start no earlier than 2023-05-05 | Project Menager RAF; Printer | 8h | 212.7 |
| 44 | 2 | **WP2: Analiza korisničkih zahteva** |  | 29d | 2021-05-05 | 2021-06-14 |  | 10d | 0d |  |  | 392h | 6,324 |
| 45 | 2.1 | Pravljenje online upitnika o nedostacima postojećih sistema I potencijalnim predlozima budućih korisnika |  | 5d | 2021-05-05 | 2021-05-11 |  | 10d | 0d |  | Project Menager TUM | 40h | 800 |
| 46 | 2.2 | Anketiranje studenata |  | 6d | 2021-05-12 | 2021-05-19 | 45 | 10d | 0d |  | Project Menager RAF | 48h | 576 |
| 47 | 2.3 | Anketiranje profesora |  | 6d | 2021-05-12 | 2021-05-19 | 45 | 10d | 0d |  | Project Menager P&M | 48h | 528 |
| 48 | 2.4 | Intervjuisanje roditelja |  | 6d | 2021-05-12 | 2021-05-19 | 45 | 10d | 0d |  | Project Menager BJ | 48h | 900 |
| 49 | 2.5 | Obrada rezultata ankete I pisanje izveštaja o prikupljenim infomracijama iz intervjua I ankete |  | 2d | 2021-05-20 | 2021-05-21 | 46, 47, 48 | 10d | 0d |  | Project Menager RAF | 16h | 192 |
| 50 | 2.6 | Pisanje scenarija slučajeva upotrebe |  | 8d | 2021-05-24 | 2021-06-02 | 49 | 10d | 0d |  | Project Menager RAF; Project Menager TUM | 128h | 2,048 |
| 51 | 2.7 | Dizajn probnog nacrta projekta |  | 4d | 2021-06-03 | 2021-06-08 | 50 | 10d | 0d |  | Project Menager TUM | 32h | 640 |
| 52 | 2.8 | Prezentacija probnog nacrta kupcu |  | 1d | 2021-06-09 | 2021-06-09 | 51 | 10d | 0d |  | Project Menager TUM | 8h | 160 |
| 53 | 2.9 | Dizajn finalnog nacrta projekta (nakon dopune starog nacrta) |  | 3d | 2021-06-10 | 2021-06-14 | 52 | 10d | 0d |  | Project Menager TUM | 24h | 480 |
| 54 | 2.10 | Prezentacije finalnog nacrta kupcu | milestone | 0d | 2021-06-14 | 2021-06-14 | 53 | 10d |  |  | Project Menager ETF; Television 65"; 4K video; Smart |  |  |

| ID | WBS | Task | Duration | Start | Finish | Predecessors | Total slack | Free slack | Resources | Work | Cost |
| --- | --- | --- | --- | --- | --- | --- | --- | --- | --- | --- | --- |
| 55 | 3 | **WP3: Dizajniranje arhitekture sistema** | 62d | 2021-06-15 | 2021-09-08 | 44, 11 | 10d | 0d |  | 1312h | 36,071.64 |
| 56 | 3.1 | Odabir platformi za rad | 2d | 2021-06-15 | 2021-06-16 |  | 10d | 0d | Team Leader WP3 RAF; WP3 Worker1 ETF; WP3 Worker1 RAF | 48h | 538.4 |
| 57 | 3.2 | **Dizajniranje korisničkog interfejsa** | 24d | 2021-06-17 | 2021-07-20 | 56 | 10d | 0d |  | 480h | 18,661.55 |
| 58 | 3.2.1 | Dizajniranje login komponente | 4d | 2021-06-17 | 2021-06-22 |  | 10d | 0d | WP3 Worker1 ETF; WP3 Worker4 RAF; Laptop 17.3";Processor 8 Core 5GHz;16GB RAM;1TB SSD; Graphic Card 16GB VRAM.; WP3 Worker3 ETF | 96h | 3,881.12 |
| 59 | 3.2.2 | Dizajniranje komponente za registraciju novih korisnika | 4d | 2021-06-23 | 2021-06-28 | 58 | 10d | 0d | WP3 Worker1 RAF; WP3 Worker3 RAF; Laptop 17.3";Processor 8 Core 5GHz;16GB RAM;1TB SSD; Graphic Card 16GB VRAM. | 64h | 3,445.6 |
| 60 | 3.2.3 | Dizajniranje administratorske komponente | 4d | 2021-06-29 | 2021-07-02 | 59 | 10d | 0d | WP3 Worker1 BJ; WP3 Worker1 RAF; Laptop 17.3";Processor 8 Core 5GHz;16GB RAM;1TB SSD; Graphic Card 16GB VRAM. | 64h | 3,672.8 |
| 61 | 3.2.4 | Dizaniranje komponente za profesore | 4d | 2021-07-05 | 2021-07-08 | 60 | 10d | 0d | WP3 Worker2 ETF; WP3 Worker2 RAF; Laptop 17.3";Processor 8 Core 5GHz;16GB RAM;1TB SSD; Graphic Card 16GB VRAM. | 64h | 3,476.96 |
| 62 | 3.2.5 | Dizajniranje komponente za učenike | 4d | 2021-07-09 | 2021-07-14 | 61 | 10d | 0d | WP3 Worker1 TUM; WP3 Worker2 TUM; Tablet; 6GB; 128GB; 2388x1668 resolution; WP3 Worker2 RAF | 96h | 2,811.95 |
| 63 | 3.2.6 | Dizajniranje komponente za roditelje | 4d | 2021-07-15 | 2021-07-20 | 62 | 10d |  | WP3 Worker1 EA; WP3 Worker2 EA; WP3 Worker2 RAF | 96h | 1,373.12 |
| 64 | 3.3 | **Modelovanje aplikacije** | 36d | 2021-07-21 | 2021-09-08 | 57 | 10d |  |  | 784h | 16,871.69 |
| 65 | 3.3.1 | **Izrada UML dijagrama slučajeva upotrebe** | 12d | 2021-07-21 | 2021-08-05 |  | 10d | 0d |  | 256h | 9,262.89 |
| 66 | 3.3.1.1 | Izrada UML dijagrama slučajeva upotrebe login komponente | 2d | 2021-07-21 | 2021-07-22 |  | 10d | 0d | Team Leader WP3 RAF; WP3 Worker4 RAF; Laptop 17.3";Processor 8 Core 5GHz;16GB RAM;1TB SSD; Graphic Card 16GB VRAM. | 32h | 3,036.32 |
| 67 | 3.3.1.2 | Izrada UML dijagrama slučajeva upotrebe komponente za registraciju | 2d | 2021-07-23 | 2021-07-26 | 66 | 10d | 0d | WP3 Worker3 RAF; WP3 Worker1 RAF; WP3 Worker3 ETF | 48h | 574.88 |
| 68 | 3.3.1.3 | Izrada UML dijagrama slučajeva upotrebe komponente za administratore | 2d | 2021-07-27 | 2021-07-28 | 67 | 10d | 0d | WP3 Worker1 BJ; WP3 Worker1 RAF | 32h | 486.4 |
| 69 | 3.3.1.4 | Izrada UML dijagrama slučajeva upotrebe komponente za profesore | 2d | 2021-07-29 | 2021-07-30 | 68 | 10d | 0d | WP3 Worker2 ETF; WP3 Worker2 RAF; Tablet; 6GB; 128GB; 2388x1668 resolution [200%] | 32h | 2,386.78 |
| 70 | 3.3.1.5 | Izrada UML dijagrama slučajeva upotrebe komponente za učenike | 2d | 2021-08-02 | 2021-08-03 | 69 | 10d | 0d | WP3 Worker1 TUM; WP3 Worker2 TUM; Tablet; 6GB; 128GB; 2388x1668 resolution; WP3 Worker4 RAF | 48h | 1,905.55 |
| 71 | 3.3.1.6 | Izrada UML dijagrama slučajeva upotrebe komponente za roditelje | 2d | 2021-08-04 | 2021-08-05 | 70 | 10d |  | WP3 Worker1 EA; WP3 Worker2 EA; WP3 Worker2 RAF; WP3 Worker3 RAF | 64h | 872.96 |
| 72 | 3.3.2 | **Izrada UML dijagrama sekvenci** | 12d | 2021-08-06 | 2021-08-23 | 65 | 10d | 0d |  | 272h | 3,736.16 |
| 73 | 3.3.2.1 | Izrada UML dijagrama sekvenci login komponente | 2d | 2021-08-06 | 2021-08-09 |  | 10d | 0d | Team Leader WP3 RAF; WP3 Worker4 RAF; WP3 Worker1 RAF; WP3 Worker2 RAF; WP3 Worker3 RAF | 80h | 895.52 |
| 74 | 3.3.2.2 | Izrada UML dijagrama sekvenci komponente za registraciju | 2d | 2021-08-10 | 2021-08-11 | 73 | 10d | 0d | WP3 Worker3 RAF; WP3 Worker1 RAF | 32h | 372.8 |
| 75 | 3.3.2.3 | Izrada UML dijagrama sekvenci komponente za administratore | 2d | 2021-08-12 | 2021-08-13 | 74 | 10d | 0d | WP3 Worker1 BJ; WP3 Worker1 RAF | 32h | 486.4 |
| 76 | 3.3.2.4 | Izrada UML dijagrama sekvenci komponente za profesore | 2d | 2021-08-16 | 2021-08-17 | 75 | 10d | 0d | WP3 Worker2 ETF; WP3 Worker2 RAF | 32h | 388.48 |
| 77 | 3.3.2.5 | Izrada UML dijagrama sekvenci komponente za učenike | 2d | 2021-08-18 | 2021-08-19 | 76 | 10d | 0d | WP3 Worker1 TUM; WP3 Worker2 TUM; WP3 Worker3 RAF | 48h | 906.4 |
| 78 | 3.3.2.6 | Izrada UML dijagrama sekvenci komponente za roditelje | 2d | 2021-08-20 | 2021-08-23 | 77 | 10d |  | WP3 Worker1 EA; WP3 Worker2 EA; WP3 Worker4 RAF | 48h | 686.56 |

| ID | WBS | Task | Type | Duration | Start | Finish | Predecessors | Total slack | Free slack | Resources | Work | Cost |
| --- | --- | --- | --- | --- | --- | --- | --- | --- | --- | --- | --- | --- |
| 79 | 3.3.3 | **Izrada UML dijagrama klasa** |  | 12d | 2021-08-24 | 2021-09-08 | 72 | 10d |  |  | 256h | 3,872.64 |
| 80 | 3.3.3.1 | Izrada UML dijagrama klasa login komponente |  | 2d | 2021-08-24 | 2021-08-25 |  | 10d | 0d | Team Leader WP3 RAF; WP3 Worker4 RAF; WP3 Worker3 ETF | 48h | 538.4 |
| 81 | 3.3.3.2 | Izrada UML dijagrama klasa komponente za registraciju |  | 2d | 2021-08-26 | 2021-08-27 | 80 | 10d | 0d | WP3 Worker3 RAF; WP3 Worker1 RAF; WP3 Worker2 TUM | 48h | 732.8 |
| 82 | 3.3.3.3 | Izrada UML dijagrama klasa komponente za administratore |  | 2d | 2021-08-30 | 2021-08-31 | 81 | 10d | 0d | WP3 Worker1 BJ; WP3 Worker1 RAF | 32h | 486.4 |
| 83 | 3.3.3.4 | Izrada UML dijagrama klasa komponente za profesore |  | 2d | 2021-09-01 | 2021-09-02 | 82 | 10d | 0d | WP3 Worker2 ETF; WP3 Worker2 RAF | 32h | 388.48 |
| 84 | 3.3.3.5 | Izrada UML dijagrama klasa komponente za učenike |  | 2d | 2021-09-03 | 2021-09-06 | 83 | 10d | 0d | WP3 Worker1 TUM; WP3 Worker2 TUM; WP3 Worker1 RAF | 48h | 906.4 |
| 85 | 3.3.3.6 | Izrada UML dijagrama klasa komponente za roditelje |  | 2d | 2021-09-07 | 2021-09-08 | 84 | 10d |  | WP3 Worker1 EA; WP3 Worker2 EA; WP4 Worker 1 TUM | 48h | 820.16 |
| 86 | 4 | **WP4: Kreiranje korisničkog interfejsa** |  | 338d | 2021-09-09 | 2022-12-26 | 55, 14 | 10d | 0d |  | 14352h | 237,417.32 |
| 87 | 4.1 | **Stilizacija aplikacije** |  | 82d | 2021-09-09 | 2021-12-31 |  | 10d | 0d |  | 1864h | 39,253.78 |
| 88 | 4.1.1 | Stilizacija login komponente |  | 10d | 2021-09-09 | 2021-09-22 |  | 10d | 0d | WP4 Worker1 BJ; WP4 Worker2 BJ; Laptop 15.6";Processor 8 Core 4.6GHz;16GB RAM;1TB SSD; Graphic Card 16GB VRAM [200%]; Team Leader WP4 BJ | 240h | 10,333.34 |
| 89 | 4.1.2 | Stilizacije komponente za registraciju |  | 16d | 2021-09-23 | 2021-10-14 | 88 | 10d | 0d | WP4 Worker 1 RAF; WP4 Worker 1 TUM; Television 65"; 4K video; Smart; WP4 Worker1 BJ | 384h | 7,064.36 |
| 90 | 4.1.3 | Stilizacija komponente za administratore |  | 13d | 2021-10-15 | 2021-11-02 | 89 | 10d | 0d | WP4 Worker1 ETF; WP4 Worker2 BJ; Television 65"; 4k HDR Smart NanoCell; desktop PC Processor 4 Core 2.90GHz to 5GHz 16GB RAM 480GB SDD Graphic card 8GB VRAM; Monitor 27" UHD; Web cam; 2.0 Mpix; Wirless keyboard and mouse; 1000DPI | 208h | 5,913.28 |
| 91 | 4.1.4 | Stilizacija komponente za profesore |  | 17d | 2021-11-03 | 2021-11-25 | 90 | 10d | 0d | WP4 Worker1 BJ; WP4 Worker2 ETF; WP4 Worker 1 TUM | 408h | 6,714.32 |
| 92 | 4.1.5 | Stilizacija komponente za učenike |  | 14d | 2021-11-26 | 2021-12-15 | 91 | 10d | 0d | WP4 Worker1 ETF; WP4 Worker1 BJ; WP4 Worker2 BJ | 336h | 5,389.44 |
| 93 | 4.1.6 | Stilizacija komponente za roditelje |  | 12d | 2021-12-16 | 2021-12-31 | 92 | 10d |  | WP4 Worker1 BJ; WP4 Worker1 ETF; WP4 Worker2 ETF | 288h | 3,839.04 |
| 94 | 4.2 | **Dodeljivanje funkcionalnosti** |  | 240d | 2022-01-03 | 2022-12-02 | 87 | 10d | 0d |  | 9600h | 137,346.2 |
| 95 | 4.2.1 | Dodeljivanje funkcionalnosti login komponenti |  | 2mo | 2022-01-03 | 2022-02-25 |  | 10d | 0d | WP4 Worker 1 RAF; WP4 Worker 1 TUM; Laptop 14";Proccessor to 4.3 GHz; 8GB RAM; 512GB SSD; Intel UHD [200%]; WP4 Worker2 BJ; WP4 Worker1 BJ; WP4 Worker1 ETF; WP4 Worker2 ETF | 1920h | 29,865.2 |
| 96 | 4.2.2 | Dodeljivanje funkcionalnosti komponenti za registraciju |  | 2mo | 2022-02-28 | 2022-04-22 | 95 | 10d | 0d | WP4 Worker 1 TUM; WP4 Worker1 ETF; Laptop 14";Proccessor to 4.3 GHz; 8GB RAM; 512GB SSD; Intel UHD [200%]; WP4 Worker1 BJ; WP4 Worker 1 RAF; WP4 Worker2 BJ; WP4 Worker2 ETF | 1920h | 29,865.2 |
| 97 | 4.2.3 | Dodeljivanje funkcionalnosti komponenti za administratore |  | 2mo | 2022-04-25 | 2022-06-17 | 96 | 10d | 0d | WP4 Worker1 ETF; WP4 Worker2 ETF; WP4 Worker1 BJ; WP4 Worker 1 RAF; WP4 Worker 1 TUM; WP4 Worker2 BJ | 1920h | 28,195.2 |
| 98 | 4.2.4 | Dodeljivanje funkcionalnosti komponenti za profesore |  | 2mo | 2022-06-20 | 2022-08-12 | 97 | 10d | 0d | WP4 Worker 1 RAF; WP4 Worker 1 TUM; Laptop 14";Proccessor to 4.3 GHz; 8GB RAM; 512GB SSD; Intel UHD; WP4 Worker2 ETF; WP4 Worker1 ETF | 1280h | 17,030.2 |
| 99 | 4.2.5 | Dodeljivanje funkcionalnosti komponenti za učenike |  | 2mo | 2022-08-15 | 2022-10-07 | 98 | 10d | 0d | WP4 Worker1 ETF; WP4 Worker2 ETF; WP4 Worker 1 RAF; WP4 Worker 1 TUM | 1280h | 16,195.2 |
| 100 | 4.2.6 | Dodeljivanje funkcionalnosti komponenti za roditelje |  | 2mo | 2022-10-10 | 2022-12-02 | 99 | 10d |  | WP4 Worker 1 RAF; WP4 Worker2 ETF; WP4 Worker 1 TUM; WP4 Worker1 ETF | 1280h | 16,195.2 |
| 101 | 4.3 | Pisanje testova |  | 100d | 2022-07-18 | 2022-12-02 | 94SS+140d | 26d |  | Team Leader WP4 BJ; WP4 Worker1 BJ; WP4 Worker2 BJ; Laptop 15.6";Processor 8 Core 4.6GHz;16GB RAM;1TB SSD; Graphic Card 16GB VRAM | 2400h | 47,916.67 |
| 102 | 4.4 | **Prezentovanje** |  | 16d | 2022-12-05 | 2022-12-26 | 94 | 10d |  |  | 488h | 12,900.67 |
| 103 | 4.4.1 | Prezentovanje prototipa aplikacije |  | 1d | 2022-12-05 | 2022-12-05 |  | 10d | 0d | Team Leader WP4 BJ [50%]; WP4 Worker 1 TUM [50%]; Laptop 14";Proccessor to 4.3 GHz; 8GB RAM; 512GB SSD; Intel UHD; Laptop 15.6";Processor 8 Core 4.6GHz;16GB RAM;1TB SSD; Graphic Card 16GB VRAM | 8h | 3,906.67 |
| 104 | 4.4.2 | Dodatna dorada funkcionalnosti nakon prezentovanja prototipa |  | 15d | 2022-12-06 | 2022-12-26 | 103 | 10d | 0d | WP4 Worker1 ETF; WP4 Worker2 BJ; WP4 Worker 1 TUM; Laptop 14";Proccessor to 4.3 GHz; 8GB RAM; 512GB SSD; Intel UHD [200%]; WP4 Worker 1 RAF; WP4 Worker1 BJ | 480h | 8,994 |
| 105 | 4.4.3 | Prezentovanje finalne verzije aplikacije | milestone | 0d | 2022-12-26 | 2022-12-26 | 104 | 10d |  | Team Leader WP4 BJ; Laptop 15.6";Processor 8 Core 4.6GHz;16GB RAM;1TB SSD; Graphic Card 16GB VRAM; Television 65"; 4k HDR Smart NanoCell |  |  |

| ID | WBS | Task | Type | Duration | Start | Finish | Predecessors | Total slack | Free slack | Constraint | Resources | Work | Cost |
| --- | --- | --- | --- | --- | --- | --- | --- | --- | --- | --- | --- | --- | --- |
| 106 | 5 | **WP5: Dizajniranje I izrada baze podataka** |  | 43d | 2021-09-09 | 2021-11-08 | 55, 18 | 305d | 0d |  |  | 1496h | 31,159.66 |
| 107 | 5.1 | Pravljenje ER dijagrama |  | 9d | 2021-09-09 | 2021-09-21 |  | 305d | 0d |  | Team Leader WP5 TUM; WP5 Worker1 ETF; WP5 Worker1 RAF; WP5 Worker1 TUM; WP5 Worker2 TUM | 360h | 5,760 |
| 108 | 5.2 | Normalizacija baze podataka |  | 7d | 2021-09-22 | 2021-09-30 | 107 | 305d | 0d |  | WP5 Worker1 EA; WP5 Worker1 TUM; WP5 Worker2 TUM; WP5 Worker3 TUM | 224h | 4,235.28 |
| 109 | 5.3 | Kreiranje prototipa baze podataka |  | 18d | 2021-10-01 | 2021-10-26 | 108 | 305d | 0d |  | WP5 Worker2 ETF; WP5 Worker2 TUM; WP5 Worker3 TUM; Laptop 15.6";Processor 8 Core 4.6GHz;16GB RAM;1TB SSD; Graphic Card 16GB VRAM; WP5 Worker1 TUM | 576h | 13,087.39 |
| 110 | 5.4 | Prezentacija prototipa baze podataka |  | 1d | 2021-10-27 | 2021-10-27 | 109 | 305d | 0d |  | WP5 Worker2 TUM; WP5 Worker3 TUM | 16h | 320 |
| 111 | 5.5 | Kreiranje finalne verzije baze podataka |  | 8d | 2021-10-28 | 2021-11-08 | 110 | 305d | 0d |  | WP5 Worker1 EA; WP5 Worker1 ETF; WP5 Worker1 RAF; WP5 Worker1 TUM; Laptop 15.6";Processor 8 Core 4.6GHz;16GB RAM;1TB SSD; Graphic Card 16GB VRAM; WP5 Worker3 TUM | 320h | 7,756.99 |
| 112 | 5.6 | Prezentovanje finalne verzije baze podataka | milestone | 0d | 2021-11-08 | 2021-11-08 | 111 | 305d |  |  | Team Leader WP5 TUM; Laptop 15.6";Processor 8 Core 4.6GHz;16GB RAM;1TB SSD; Graphic Card 16GB VRAM |  |  |
| 113 | 6 | **WP6: Izrada sistema za zaštitu podataka** |  | 80d | 2021-09-09 | 2021-12-29 | 55, 21 | 268d | 0d |  |  | 2920h | 46,669.42 |
| 114 | 6.1 | Odabir platforme |  | 2d | 2021-09-09 | 2021-09-10 |  | 268d | 0d |  | Team Leader WP6 EA | 16h | 250.08 |
| 115 | 6.2 | Odabir algoritama za rad |  | 2d | 2021-09-13 | 2021-09-14 | 114 | 268d | 0d |  | Team Leader WP6 EA; WP6 Worker1 EA; WP6 Worker2 EA | 48h | 750.24 |
| 116 | 6.3 | Modelovanje sistema za zaštitu |  | 35d | 2021-09-15 | 2021-11-02 | 115 | 268d | 0d |  | WP6 Worker1 RAF; WP6 Worker1 TUM; WP6 Worker1 EA; WP6 Worker1 ETF; WP6 Worker2 TUM | 1400h | 21,173.6 |
| 117 | 6.4 | Kreiranje prototipa sistema za zaštitu |  | 20d | 2021-11-03 | 2021-11-30 | 116 | 268d | 0d |  | WP6 Worker1 ETF; WP6 Worker1 RAF; WP6 Worker1 EA; WP6 Worker2 EA | 640h | 8,200 |
| 118 | 6.5 | Prezentacija prototipa |  | 1d | 2021-12-01 | 2021-12-01 | 117 | 268d | 0d |  | WP6 Worker1 ETF; WP6 Worker2 TUM | 16h | 244.96 |
| 119 | 6.6 | Kreiranje finalne verzije sistema za zaštitu |  | 20d | 2021-12-02 | 2021-12-29 | 118 | 268d | 0d |  | WP6 Worker1 TUM; WP6 Worker1 EA; WP6 Worker2 EA; Laptop 15.6";Processor 8 Core 4.6GHz;16GB RAM;1TB SSD; Graphic Card 16GB VRAM; WP6 Worker2 TUM; WP7 Worker1 BJ; WP7 Worker1 EA; WP7 Worker1 ETF | 800h | 16,050.54 |
| 120 | 6.7 | Prezentacija sistema za zaštitu | milestone | 0d | 2021-12-29 | 2021-12-29 | 119 | 268d |  |  | Team Leader WP6 EA; Laptop 15.6";Processor 8 Core 4.6GHz;16GB RAM;1TB SSD; Graphic Card 16GB VRAM |  |  |
| 121 | 7 | **WP7: Integracija I testiranje** |  | 46d | 2022-12-27 | 2023-02-28 | 86, 23, 106, 113 | 0d |  |  |  | 1076h | 21,200.62 |
| 122 | 7.1 | Integracija |  | 1mo | 2022-12-27 | 2023-01-23 |  | 10d | 0d |  | WP7 Worker1 ETF; Team Leader WP7 RAF; desktop PC Processor 4 Core 2.90GHz to 5GHz 16GB RAM 480GB SDD Graphic card 8GB VRAM; Laptop 15.6";Processor 8 Core 4.6GHz;16GB RAM;1TB SSD; Graphic Card 16GB VRAM; Monitor 27" UHD; Web cam; 2.0 Mpix; Wirless keyboard and mouse; 1000DPI | 320h | 7,682.87 |
| 123 | 7.2 | Izrada test plana |  | 5d | 2023-01-24 | 2023-01-30 | 122 | 10d | 0d |  | WP7 Worker1 RAF; WP7 Worker1 TUM | 80h | 1,174.8 |
| 124 | 7.3 | Izvršavanje jediničnih testova |  | 7d | 2023-01-31 | 2023-02-08 | 123 | 14d |  |  | WP7 Worker1 EA; WP7 Worker2 RAF; WP7 Worker1 ETF | 168h | 1,994.72 |
| 125 | 7.4 | Izvršavanje UI testova |  | 10d | 2023-01-31 | 2023-02-13 | 123 | 11d |  |  | WP7 Worker1 TUM; WP7 Worker1 RAF; WP7 Worker2 ETF | 240h | 3,199.2 |
| 126 | 7.5 | Integraciono I sistemsko testiranje |  | 7d | 2023-02-14 | 2023-02-22 | 123, 122 | 0d |  | start no earlier than 2023-02-14 | WP7 Worker1 EA; WP7 Worker1 ETF; WP7 Worker1 TUM; Laptop 15.6";Processor 8 Core 4.6GHz;16GB RAM;1TB SSD; Graphic Card 16GB VRAM | 140h | 5,069.03 |
| 127 | 7.6 | Instalacija aplikacije na server I puštanje u rad |  | 4d | 2023-02-23 | 2023-02-28 | 126 | 0d |  |  | WP7 Worker1 ETF; WP7 Worker1 TUM; WP7 Worker1 BJ; WP7 Worker1 EA | 128h | 2,080 |
| 128 | 8 | **WP8: Disiminacija I eskploatacija** |  | 48d | 2023-03-01 | 2023-05-05 | 121 | 0d |  |  |  | 1376h | 24,903.04 |
| 129 | 8.1 | Pravljenje reklamnog materijala |  | 14d | 2023-03-01 | 2023-03-20 |  | 0d |  |  | Team Leader WP8 P&M; WP8 Worker1 P&M; Television 77"; 4K UHD Smart | 224h | 8,321.12 |
| 130 | 8.2 | Pravljenje video tutorijala za korisnike |  | 14d | 2023-03-01 | 2023-03-20 |  | 24d | 0d |  | WP8 Worker1 RAF; WP8 Worker1 ETF | 224h | 2,238.88 |
| 131 | 8.3 | Održavanje obuke za administratore |  | 10d | 2023-03-21 | 2023-04-03 | 129, 130 | 24d |  |  | WP8 Worker1 RAF; WP8 Worker1 ETF | 160h | 1,599.2 |
| 132 | 8.4 | Reklamiranje |  | 34d | 2023-03-21 | 2023-05-05 | 129 | 0d |  |  | Team Leader WP8 P&M; WP8 Worker3 P&M | 544h | 4,422.72 |
| 133 | 8.5 | Pravljenje anketa |  | 14d | 2023-03-01 | 2023-03-20 |  | 34d |  |  | WP8 Worker4 P&M; WP8 Worker5 P&M; Television 77"; 4K UHD Smart | 224h | 8,321.12 |
